# TTC-P2-Overview

Schedule from MS Project, 2016-08-01 to 2016-12-26.

## Calendars

- Standard: Mon-Fri 08:00-12:00, 13:00-17:00; Sat-Sun off.

## Schedule

| ID | WBS | Task | Type | Duration | Start | Finish | Predecessors | Total slack |
| --- | --- | --- | --- | --- | --- | --- | --- | --- |
| 1 | 1 | **Startup** |  | 3d | 2016-08-01 | 2016-08-03 |  | 0d |
| 2 | 1.1 | Project mandate |  | 1d | 2016-08-01 | 2016-08-01 |  | 0d |
| 3 | 1.2 | Project brief |  | 1d | 2016-08-02 | 2016-08-02 | 2 | 0d |
| 4 | 1.3 | Resourcing |  | 1d | 2016-08-03 | 2016-08-03 | 3 | 0d |
| 5 | 1.4 | Projection Initation Approval | milestone | 0d | 2016-08-03 | 2016-08-03 | 4 | 0d |
| 6 | 2 | **Initiate** |  | 4.62d | 2016-08-04 | 2016-08-10 | 1 | 0d |
| 7 | 2.1 | Risk management strategy |  | 2h | 2016-08-04 | 2016-08-04 |  | 0d |
| 8 | 2.2 | Quality management Strategy |  | 2h | 2016-08-04 | 2016-08-04 | 7 | 0d |
| 9 | 2.3 | Change management Strategy |  | 2h | 2016-08-04 | 2016-08-04 | 8 | 0d |
| 10 | 2.4 | Communication strategy |  | 2h | 2016-08-04 | 2016-08-04 | 9 | 0d |
| 11 | 2.5 | Create project plan |  | 5h | 2016-08-05 | 2016-08-05 | 10 | 0d |
| 12 | 2.6 | Pre project scoping session (PPD) |  | 1d | 2016-08-05 | 2016-08-08 | 11 | 0d |
| 13 | 2.7 | Refine busines case |  | 2h | 2016-08-08 | 2016-08-08 | 12 | 0d |
| 14 | 2.8 | Project Initiation Document |  | 14h | 2016-08-08 | 2016-08-10 | 13 | 0d |
| 15 | 2.9 | Project Approval | milestone | 0d | 2016-08-10 | 2016-08-10 | 14 | 0d |
| 16 | 3 | **DOCUMENTATION** |  | 16d | 2016-08-10 | 2016-09-01 | 6 | 0d |
| 17 | 3.1 | Development of Function Specification |  | 5d | 2016-08-10 | 2016-08-17 |  | 0d |
| 18 | 3.2 | Development of Technical Specification |  | 5d | 2016-08-17 | 2016-08-24 | 17 | 0d |
| 19 | 3.3 | Comments and approval of Functional and Technical specification |  | 3d | 2016-08-24 | 2016-08-29 | 18 | 0d |
| 20 | 3.4 | Creation of site map and structure |  | 2d | 2016-08-29 | 2016-08-31 | 19 | 0d |
| 21 | 3.5 | Approval of site map and structure |  | 1d | 2016-08-31 | 2016-09-01 | 20 | 0d |
| 22 | 4 | **CREATIVE CONCEPTS** |  | 47d | 2016-09-01 | 2016-11-07 | 16 | 0d |
| 23 | 4.1 | Development of Wireframes - Tablet/Desktop |  | 2d | 2016-09-01 | 2016-09-05 |  | 0d |
| 24 | 4.2 | Development of Wireframes - Mobile |  | 2d | 2016-09-05 | 2016-09-07 | 23 | 0d |
| 25 | 4.3 | Creative development - digital |  | 3d | 2016-09-07 | 2016-09-12 | 24 | 0d |
| 26 | 4.4 | Create sample templates for infographics |  | 3d | 2016-09-12 | 2016-09-15 | 25 | 0d |
| 27 | 4.5 | Client comments and feedback |  | 1d | 2016-09-15 | 2016-09-16 | 26 | 0d |
| 28 | 4.6 | Amends to wireframes |  | 1d | 2016-09-16 | 2016-09-19 | 27 | 0d |
| 29 | 4.7 | Brand consultation |  | 5d | 2016-09-19 | 2016-09-26 | 28 | 0d |
| 30 | 4.8 | Content creation - digital |  | 30d | 2016-09-26 | 2016-11-07 | 29 | 0d |
| 31 | 4.9 | Brand department sign off | milestone | 0d | 2016-11-07 | 2016-11-07 | 30 | 0d |
| 32 | 4.10 | Client final sign off | milestone | 0d | 2016-11-07 | 2016-11-07 | 31 | 0d |

| ID | WBS | Task | Type | Duration | Start | Finish | Predecessors | Total slack |
| --- | --- | --- | --- | --- | --- | --- | --- | --- |
| 33 | 5 | **BUILD OF SITE** |  | 21d | 2016-11-07 | 2016-12-06 | 22 | 0d |
| 34 | 5.1 | Creation of wrapper templates and framework |  | 5d | 2016-11-07 | 2016-11-14 |  | 0d |
| 35 | 5.2 | Build of inner templates |  | 10d | 2016-11-14 | 2016-11-28 | 34 | 0d |
| 36 | 5.3 | Add content |  | 5d | 2016-11-28 | 2016-12-05 | 35 | 0d |
| 37 | 5.4 | Approval and sign off |  | 1d | 2016-12-05 | 2016-12-06 | 36 | 0d |
| 38 | 6 | **INTEGRATION AND TESTING** |  | 14d | 2016-12-06 | 2016-12-26 | 33 | 0d |
| 39 | 6.1 | Integration |  | 3d | 2016-12-06 | 2016-12-09 |  | 0d |
| 40 | 6.2 | Omniture tagging |  | 2d | 2016-12-09 | 2016-12-13 | 39 | 0d |
| 41 | 6.3 | Omniture team feedback |  | 1d | 2016-12-13 | 2016-12-14 | 40 | 0d |
| 42 | 6.4 | Bug fixes |  | 3d | 2016-12-14 | 2016-12-19 | 41 | 0d |
| 43 | 6.5 | Final browser testing |  | 1d | 2016-12-19 | 2016-12-20 | 42 | 0d |
| 44 | 6.6 | Final amends and tweaks |  | 2d | 2016-12-20 | 2016-12-22 | 43 | 0d |
| 45 | 6.7 | Live testing |  | 1d | 2016-12-22 | 2016-12-23 | 44 | 0d |
| 46 | 6.8 | final approval and sign off | milestone | 0d | 2016-12-23 | 2016-12-23 | 45 | 0d |
| 47 | 6.9 | WEBSITE GO LIVE DATE |  | 1d | 2016-12-23 | 2016-12-26 | 46 | 0d |
