# TTC-P2-Stage 1

Schedule from MS Project, 2016-08-01 to 2016-10-05.

## Calendars

- Standard: Mon-Fri 08:00-12:00, 13:00-17:00; Sat-Sun off.

## Schedule

| ID | WBS | Task | Type | Duration | Start | Finish | Predecessors | Total slack |
| --- | --- | --- | --- | --- | --- | --- | --- | --- |
| 1 | 4 | **PHASE 1 CREATIVE CONCEPTS** |  | 48d | 2016-08-01 | 2016-10-05 |  | 0d |
| 2 | 4.1 | **Development of Wireframes - Tablet/Desktop** |  | 2d | 2016-08-01 | 2016-08-02 |  | 0d |
| 3 | 1.1.1 | Construct wireframes - desktop |  | 1d | 2016-08-01 | 2016-08-01 |  | 0d |
| 4 | 1.1.2 | Construct wireframes - tablet |  | 1d | 2016-08-02 | 2016-08-02 | 3 | 0d |
| 5 | 4.2 | **Development of Wireframes - Mobile** |  | 2d | 2016-08-03 | 2016-08-04 | 4, 2 | 0d |
| 6 | 1.2.1 | Construct wireframes - mobile |  | 2d | 2016-08-03 | 2016-08-04 |  | 0d |
| 7 | 4.3 | **Creative development - digital** |  | 3d | 2016-08-05 | 2016-08-09 | 6, 5 | 0d |
| 8 | 1.3.1 | Application of design - photoshop |  | 2d | 2016-08-05 | 2016-08-08 |  | 0d |
| 9 | 1.3.2 | Refinement of design - photoshop |  | 1d | 2016-08-09 | 2016-08-09 | 8 | 0d |
| 10 | 4.4 | **Create sample templates for infographics** |  | 3d | 2016-08-10 | 2016-08-12 | 9, 7 | 0d |
| 11 | 1.4.1 | Work up design templates for infographics |  | 3d | 2016-08-10 | 2016-08-12 |  | 0d |
| 12 | 4.5 | Client comments and feedback |  | 1d | 2016-08-15 | 2016-08-15 | 11, 10 | 0d |
| 13 | 4.6 | Amends to wireframes |  | 1d | 2016-08-16 | 2016-08-16 | 12 | 0d |
| 14 | 4.7 | **Brand consultation** |  | 5d | 2016-08-17 | 2016-08-23 | 13 | 0d |
| 15 | 1.7.1 | Turn around by client approvals |  | 5d | 2016-08-17 | 2016-08-23 |  | 0d |
| 16 | 4.8 | **Content creation - digital** |  | 30d | 2016-08-24 | 2016-10-04 | 15, 14 | 0d |
| 17 | 1.8.1 | Image assets - Photoshop |  | 10d | 2016-08-24 | 2016-09-06 |  | 0d |
| 18 | 1.8.2 | Videos X 5 |  | 20d | 2016-09-07 | 2016-10-04 | 17 | 0d |
| 19 | 4.9 | Brand department sign off | milestone | 0d | 2016-10-04 | 2016-10-04 | 16 | 0d |
| 20 | 4.10 | Client final sign off |  | 1d | 2016-10-05 | 2016-10-05 | 19 | 0d |
